# TaskList

How a schedule from MS Project changed from version to version. A marks actual dates.

## Version 1 (saved 2010-10-29)

| ID | WBS | Task | Duration | Start | Finish | Predecessors | Total float | Constraint |
| --- | --- | --- | --- | --- | --- | --- | --- | --- |
| 1 | 1 | **A. MODULE A** | 89d? | 2010-10-04 | 2010-12-31 |  | -61d |  |
| 2 | 1.1 | **1. BUSINESS ANALYSIS** | 20d? | 2010-10-04 | 2010-10-23 |  | -50d |  |
| 3 |  | 1.1 Understand Habubank's Documents | 12d? | 2010-10-04 | 2010-10-15 |  | -42d | finish no earlier than 2010-10-15 |
| 4 |  | 1.2 Understand EPI's Document | 8d? | 2010-10-16 | 2010-10-23 |  | -50d | finish no earlier than 2010-10-23 |
| 5 | 1.2 | **2. SYSTEM ANALYSIS** | 32d? | 2010-10-25 | 2010-11-25 | 2 | -51d |  |
| 6 |  | 2.1 ELICITATION | 22d? | 2010-10-25 | 2010-11-15 |  | -41d | finish no earlier than 2010-11-15 |
| 7 |  | 2.2 ANALYSIS AND NEGOTIATION | 22d? | 2010-10-25 | 2010-11-15 |  | -51d | finish no earlier than 2010-11-15 |
| 8 |  | 2.3 VALIDATION | 5d? | 2010-11-16 | 2010-11-20 | 7 | -51d | finish no earlier than 2010-11-20 |
| 9 |  | 2.4 DESCRIBE REQUIREMENTS | 5d? | 2010-11-21 | 2010-11-25 | 8 | -51d | finish no earlier than 2010-11-25 |
| 10 | 1.3 | **3. SYSTEM DESIGN** | 20d? | 2010-11-26 | 2010-12-15 | 5 | -61d |  |
| 11 |  | 3.1 ARCHITECTURE DESIGN | 5d? | 2010-11-26 | 2010-11-30 |  | -51d | finish no earlier than 2010-11-30 |
| 12 |  | 3.2 ERD DESIGN | 5d? | 2010-12-01 | 2010-12-05 | 11 | -51d | finish no earlier than 2010-12-05 |
| 13 |  | 3.3 DETAILED DESIGN | 10d? | 2010-12-06 | 2010-12-15 |  | -61d | finish no earlier than 2010-12-15 |
| 14 |  | 4. IMPLEMENTATION | 10d? | 2010-12-16 | 2010-12-25 | 10 | -61d | start no earlier than 2010-12-16 |
| 15 |  | 5. TESTING | 6d? | 2010-12-26 | 2010-12-31 | 14 | -61d | finish no earlier than 2010-12-31 |
| 16 |  | B. MODULE B | 1d? | 2010-12-01 | 2010-12-01 |  | 30d | start no earlier than 2010-12-01 |

## Version 2 (saved 2010-11-03)

Note of the change: Update project plan về việc làm requirements

Last finish stays 2010-12-31.

Added:

| ID | Task | Duration | Start | Finish | Constraint | Resources |
| --- | --- | --- | --- | --- | --- | --- |
| 7 | 2.1.0 Approach determination | 7d? | 2010-10-25 | 2010-10-31 | finish no earlier than 2010-10-31 | All members |
| 8 | 2.1.1 Account Management Module | 5d? | 2010-11-01 | 2010-11-05 | start no earlier than 2010-11-01 | Chính; Thảo |
| 9 | 2.1.2 Parameter Management Module | 12d? | 2010-10-25 | 2010-11-05 | finish no earlier than 2010-11-05 | Long; Ly; Giang |
| 10 | 2.1.3 Input Module | 5d? | 2010-11-06 | 2010-11-10 | finish no earlier than 2010-11-10 | Chính; Thảo |
| 11 | 2.1.4 Credit Ranking Module | 10d? | 2010-11-06 | 2010-11-15 | finish no earlier than 2010-11-15 | Long; Ly; Giang |
| 12 | 2.1.5 Reports Module | 5d? | 2010-11-11 | 2010-11-15 | finish no earlier than 2010-11-15 | Chính; Thảo |

Changed:

| ID | Task | Start | Duration | Other |
| --- | --- | --- | --- | --- |
| 1 | **A. MODULE A** | 2010-10-04 → 2010-09-28 (-6d) | 89d? → 95d? |  |
| 3 | 1.1 Understand Habubank's Documents |  |  | resources none → All members |
| 4 | 1.2 Understand EPI's Document |  |  | resources none → All members |
| 6 | **2.1 ELICITATION** |  |  | constraint finish no earlier than 2010-11-15 → none |

## Version 3 (saved 2010-11-03)

Note of the change: UPDATE MILESTONES

Last finish stays 2010-12-31.

Added:

| ID | Task | Duration | Start | Finish | Predecessors | Constraint |
| --- | --- | --- | --- | --- | --- | --- |
| 5 | BUSINESS ANALYSIS REPORT | 0d | 2010-10-23 | 2010-10-23 |  | start no earlier than 2010-10-23 |
| 15 | REQUIREMENTS COLLECTION | 0d | 2010-11-15 | 2010-11-15 | 14 |  |
| 18 | SYSTEM SPECIFICATION | 0d | 2010-11-25 | 2010-11-25 |  | start no earlier than 2010-11-25 |

Changed:

| ID | Task | Start | Duration | Predecessors | Other |
| --- | --- | --- | --- | --- | --- |
| 1 | **A. MODULE A** | 2010-09-28 → 2010-10-04 (+6d) | 95d? → 89d? |  |  |
| 14 | 2.2 ANALYSIS AND NEGOTIATION |  |  |  | resources none → All members |
| 16 | 2.3 VALIDATION |  |  | 14 → 15 |  |

## Version 4 (saved 2010-12-02)

Last finish 2010-12-31 → 2011-01-25 (+25d).

Added:

| ID | Task | Duration | Start | Finish | Constraint | Resources |
| --- | --- | --- | --- | --- | --- | --- |
| 25 | Integration Test Design | 20d? | 2010-11-26 | 2010-12-15 | finish no earlier than 2010-12-15 | Giang; Thảo |
| 26 | Unit Test Design | 15d? | 2010-12-16 | 2010-12-30 | finish no earlier than 2010-12-30 | Designers |
| 27 | Perform Uniit Test | 15d? | 2010-12-31 | 2011-01-14 | finish no earlier than 2011-01-14 | Coders |
| 28 | Perform Integration Test | 11d? | 2011-01-15 | 2011-01-25 | finish no earlier than 2011-01-25 |  |

Changed:

| ID | Task | Start | Finish | Duration | Total float | Predecessors | Other |
| --- | --- | --- | --- | --- | --- | --- | --- |
| 1 | **A. MODULE A** |  | 2010-12-31 → 2011-01-25 (+25d) | 89d? → 114d? | -61d → -86d |  |  |
| 19 | **3. SYSTEM DESIGN** |  | 2010-12-15 → 2010-12-30 (+15d) | 20d? → 35d? | -61d → -75d |  |  |
| 20 | 3.1 ARCHITECTURE DESIGN |  | 2010-11-30 → 2010-12-08 (+8d) | 5d? → 13d? | -51d → -75d |  | constraint finish no earlier than 2010-11-30 → finish no earlier than 2010-12-08; resources none → Long; Ly; Chính |
| 21 | 3.2 ERD DESIGN | 2010-12-01 → 2010-12-09 (+8d) | 2010-12-05 → 2010-12-15 (+10d) | 5d? → 7d? | -51d → -75d |  | constraint finish no earlier than 2010-12-05 → finish no earlier than 2010-12-15; resources none → Long; Ly; Chính |
| 22 | 3.3 DETAILED DESIGN | 2010-12-06 → 2010-12-16 (+10d) | 2010-12-15 → 2010-12-30 (+15d) | 10d? → 15d? | -61d → -75d | none → 21 | constraint finish no earlier than 2010-12-15 → finish no earlier than 2010-12-30; resources none → Long; Ly; Chính; Giang |
| 23 | 4. IMPLEMENTATION | 2010-12-16 → 2010-12-31 (+15d) | 2010-12-25 → 2011-01-14 (+20d) | 10d? → 15d? | -61d → -75d |  | constraint start no earlier than 2010-12-16 → finish no earlier than 2011-01-09; resources none → Long; Ly; Chính; Giang; Thảo |
| 24 | **5. TESTING** | 2010-12-26 → 2010-11-26 (-30d) | 2010-12-31 → 2011-01-25 (+25d) | 6d? → 61d? | -61d → -86d | 23 → 18 | constraint finish no earlier than 2010-12-31 → none |
